How a schedule from an exported table changed from version to version. A marks actual dates.

## Version 1 (saved 2025-04-22)

| ID | Task | Start |
| --- | --- | --- |
| T1 | Thương thảo và ký hợp đồng | 2023-04-01 |
| T2 | Chuẩn bị | 2023-04-01 |
| T3 | Khảo sát địa hình | 2023-04-01 |
| T4 | Khảo sát địa chất | 2023-04-01 |
| T5 | Thí nghiệm trong phòng | 2023-04-01 |
| T6 | Khảo sát Thủy văn và thủy lực | 2023-04-01 |
| T7 | Khảo sát bồi xói cửa sông | 2023-04-01 |
| T8 | Nghiên cứu bồi xói cửa sông | 2023-04-01 |

## Version 2 (saved 2025-04-22)

Added:

| ID | Task | Start | Finish |
| --- | --- | --- | --- |
| T9 | Điều tra dân sinh và Kinh tế- xã hội | 05/06/2023 | 20/07/2023 |
| T10 | Lập dự án đầu tư | 05/07/2023 | 18/09/2023 |
| T11 | Lập thiết kế cơ sở | 15/07/2023 | 13/09/2023 |
| T12 | Báo cáo khởi đầu | 13/09/2023 | 14/09/2023 |
| T13 | Báo cáo giữa kỳ | 19/08/2023 | 20/08/2023 |
| T14 | Báo cáo cuối kỳ | 28/09/2023 | 29/09/2023 |
| T15 | Thỏa thuận với giao thông | 16/09/2023 | 26/09/2023 |
| T16 | Nộp hồ sơ Dự án đầu tư | 09/10/2023 | 10/10/2023 |
| T17 | Xem xét của Chủ đầu tư | 11/10/2023 | 26/10/2023 |
| T18 | Chỉnh sửa của Tư vấn | 26/10/2023 | 31/10/2023 |
| T19 | Đánh giá tác động môi trường | 25/07/2023 | 08/09/2023 |
| T20 | Xem xét và phê duyệt DTM | 23/09/2023 | 08/10/2023 |
| T21 | Thẩm định và Phê duyệt | 10/11/2023 | 25/11/2023 |

Changed:

| ID | Task | Start | Finish | Other |
| --- | --- | --- | --- | --- |
| T1 | Thương thảo và ký hợp đồng | 2023-04-01 → 01/04/2023 | none → 01/04/2023 |  |
| T2 | chuẩn bị | 2023-04-01 → 01/04/2023 | none → 06/04/2023 | was named Chuẩn bị |
| T3 | Khảo sát địa hình | 2023-04-01 → 06/04/2023 | none → 21/05/2023 |  |
| T4 | Khảo sát địa chất (hiện trường) | 2023-04-01 → 21/04/2023 | none → 05/06/2023 | was named Khảo sát địa chất |
| T5 | Thí nghiệm trong phòng | 2023-04-01 → 05/06/2023 | none → 05/07/2023 |  |
| T6 | Khảo sát Thủy văn và thủy lực | 2023-04-01 → 21/05/2023 | none → 05/07/2023 |  |
| T7 | Khảo sát bồi xói cửa sông | 2023-04-01 → 20/06/2023 | none → 04/08/2023 |  |
| T8 | Nghiên cứu bồi xói cửa sông | 2023-04-01 → 04/08/2023 | none → 03/09/2023 |  |
